# Организация научно-практической конференции

Schedule from MS Project, 2026-10-05 to 2026-11-19, status date 2026-10-05, costs in ₽.
Учебный проект

## Calendars

- Стандартный: Mon-Fri 08:00-12:00, 13:00-17:00; Sat-Sun off. Exceptions (off unless hours are given): 2026-11-04 (День народного единства).

## Resources

| Resource | Group | Unit | Rate | Cost per use |
| --- | --- | --- | --- | --- |
| Иванов И.И. | Управление |  | 1200 |  |
| Сорокина С.Т. | Оргкомитет |  | 1000 |  |
| Петров П.П. | Дизайн |  | 900 |  |
| Смирнова А.В. | Секретариат |  | 1100 |  |
| Кузнецов Д.А. | Техника |  | 1100 |  |
| Орлова Е.Н. | Методика |  | 700 |  |
| Волков М.С. | Приём |  | 800 | 500 |
| Печать программ | Материалы | лист | 5 |  |
| Аренда зала и техники | Инфраструктура |  |  |  |

## Schedule

| ID | WBS | Task | Type | Duration | Start | Finish | Predecessors | Total slack | Free slack | Constraint | Deadline | Resources | Work | Cost | Ответственный |
| --- | --- | --- | --- | --- | --- | --- | --- | --- | --- | --- | --- | --- | --- | --- | --- |
| 1 | 1 | **Инициация** |  | 8d | 2026-10-05 | 2026-10-14 |  | 0d |  |  |  |  | 88h | 97,600 |  |
| 2 | 1.1 | Первое заседание оргкомитета |  | 1d | 2026-10-05 | 2026-10-05 |  | 0d |  |  |  | Иванов И.И.; Сорокина С.Т. | 16h | 17,600 | Иванов И.И. |
| 3 | 1.2 | Определение тематики и целевой аудитории |  | 4d | 2026-10-06 | 2026-10-09 | 2 | 0d |  |  |  | Сорокина С.Т.; Иванов И.И. [50%] | 48h | 51,200 | Сорокина С.Т. |
| 4 | 1.3 | Разработка положения о конференции |  | 3d | 2026-10-12 | 2026-10-14 | 3 | 0d |  |  |  | Иванов И.И. | 24h | 28,800 | Иванов И.И. |
| 5 | 1.4 | Положение утверждено | milestone | 0d | 2026-10-14 | 2026-10-14 | 4 | 0d |  |  |  |  |  |  |  |
| 6 | 2 | **Программный комитет** |  | 12d | 2026-10-15 | 2026-10-30 |  | 0d |  |  |  |  | 108h | 82,800 |  |
| 7 | 2.1 | Сбор аннотаций и тезисов |  | 5d | 2026-10-15 | 2026-10-21 | 5 | 0d |  |  |  | Орлова Е.Н. | 40h | 28,000 | Орлова Е.Н. |
| 8 | 2.2 | Рецензирование материалов |  | 4d | 2026-10-22 | 2026-10-27 | 7 | 0d |  |  |  | Орлова Е.Н. | 32h | 22,400 | Орлова Е.Н. |
| 9 | 2.3 | Формирование программы конференции |  | 3d | 2026-10-28 | 2026-10-30 | 8 | 0d |  |  |  | Сорокина С.Т.; Орлова Е.Н. [50%] | 36h | 32,400 | Сорокина С.Т. |
| 10 | 2.4 | Программа утверждена | milestone | 0d | 2026-10-30 | 2026-10-30 | 9 | 0d |  |  |  |  |  |  |  |
| 11 | 3 | **Логистика** |  | 9d | 2026-10-15 | 2026-10-27 |  | 8d |  |  |  |  | 108h | 163,050 |  |
| 12 | 3.1 | Подбор зала и технического оборудования |  | 4d | 2026-10-15 | 2026-10-20 | 5 | 8d | 0d |  |  | Кузнецов Д.А. | 32h | 85,200 | Кузнецов Д.А. |
| 13 | 3.2 | Организация кофе-брейков и обеда |  | 3d | 2026-10-16 | 2026-10-20 | 12SS+1d | 13d | 5d |  |  | Смирнова А.В.; Кузнецов Д.А. [50%] | 36h | 39,600 | Смирнова А.В. |
| 14 | 3.3 | Транспорт и размещение спикеров |  | 5d | 2026-10-21 | 2026-10-27 | 12, 13FF | 8d | 0d |  |  | Смирнова А.В. [50%]; Волков М.С. [50%] | 40h | 38,250 | Смирнова А.В. |
| 15 | 3.4 | Логистика подтверждена | milestone | 0d | 2026-10-27 | 2026-10-27 | 13, 14 | 8d | 0d |  |  |  |  |  |  |
| 16 | 4 | **Материалы и публичность** |  | 11d | 2026-10-28 | 2026-11-12 |  | 0d |  |  |  |  | 96h | 87,200 |  |
| 17 | 4.1 | Создание сайта конференции |  | 6d | 2026-11-02 | 2026-11-10 | 10 | 0d |  |  |  | Петров П.П. | 48h | 43,200 | Петров П.П. |
| 18 | 4.2 | Рассылка первого сообщения |  | 2d | 2026-11-11 | 2026-11-12 | 17 | 0d |  |  |  | Смирнова А.В. | 16h | 17,600 | Смирнова А.В. |
| 19 | 4.3 | Печать программ и бейджей |  | 3d | 2026-10-28 | 2026-10-30 | 15 | 8d |  |  |  | Печать программ [500 лист] |  | 2,500 |  |
| 20 | 4.4 | Подготовка сборника тезисов к печати |  | 4d | 2026-10-28 | 2026-11-02 | 8 | 7d |  |  |  | Орлова Е.Н.; Печать программ [300 лист] | 32h | 23,900 | Орлова Е.Н. |
| 21 | 4.5 | Материалы готовы | milestone | 0d | 2026-11-12 | 2026-11-12 | 19, 20, 18 | 0d |  |  |  |  |  |  |  |
| 22 | 5 | **Проведение** |  | 5d | 2026-11-13 | 2026-11-19 |  | 0d |  |  |  |  | 56h | 54,100 |  |
| 23 | 5.1 | Регистрация участников |  | 1d | 2026-11-13 | 2026-11-13 | 21 | 0d |  | start no earlier than 2026-10-05 |  | Волков М.С. | 8h | 6,900 | Волков М.С. |
| 24 | 5.2 | Открытие и пленарное заседание |  | 1d | 2026-11-16 | 2026-11-16 | 23 | 0d |  |  |  | Иванов И.И.; Сорокина С.Т. | 16h | 17,600 | Иванов И.И. |
| 25 | 5.3 | Работа секций |  | 2d | 2026-11-17 | 2026-11-18 | 24 | 0d |  |  |  | Орлова Е.Н.; Кузнецов Д.А. [50%] | 24h | 20,000 | Орлова Е.Н. |
| 26 | 5.4 | Заключительная сессия и подведение итогов |  | 1d | 2026-11-19 | 2026-11-19 | 25 | 0d |  |  |  | Иванов И.И. | 8h | 9,600 | Иванов И.И. |
| 27 | 5.5 | Конференция завершена | milestone | 0d | 2026-11-19 | 2026-11-19 | 26 | 0d |  |  | 2026-11-23 |  |  |  |  |

Notes:
- 2: Повестка дня: / 1. Цели и тематика конференции. / 2. Состав оргкомитета и программного комитета. / 3. Ограничения: бюджет, сроки, вместимость зала. / 4. План-график подготовки программы.
- 18: Список рассылки: / - участники прошлых лет / - партнёрские вузы / - профильные кафедры
