# Организация научно-практической конференции

Schedule from MS Project XML, 2026-10-05 to 2026-11-19, status date 2026-10-05.
Учебный проект

## Calendars

- Стандартный: Mon-Fri 08:00-12:00, 13:00-17:00; Sat-Sun off. Exceptions (off unless hours are given): 2026-11-04 (День народного единства).

## Resources

| Resource | Group | Unit | Rate | Cost per use |
| --- | --- | --- | --- | --- |
| Иванов И.И. | Управление |  | 1200 |  |
| Сорокина С.Т. | Оргкомитет |  | 1000 |  |
| Петров П.П. | Дизайн |  | 900 |  |
| Смирнова А.В. | Секретариат |  | 1100 |  |
| Кузнецов Д.А. | Техника |  | 1100 |  |
| Орлова Е.Н. | Методика |  | 700 |  |
| Волков М.С. | Приём |  | 800 | 500 |
| Печать программ | Материалы | лист | 5 |  |
| Аренда зала и техники | Инфраструктура |  |  |  |

## Schedule

| ID | WBS | Task | Type | Duration | Start | Finish | Predecessors | Total slack | Free slack | Constraint | Deadline | Resources | Ответственный | Часы основного ресурса | Оптимистическая длительность | Ожидаемая длительность | Пессимистическая длительность | Ставка основного ресурса |
| --- | --- | --- | --- | --- | --- | --- | --- | --- | --- | --- | --- | --- | --- | --- | --- | --- | --- | --- |
| 1 | 1 | **Инициация** |  | 8d | 2026-10-05 | 2026-10-14 |  |  |  |  |  |  |  |  |  |  |  |  |
| 2 | 1.1 | Первое заседание оргкомитета |  | 1d | 2026-10-05 | 2026-10-05 |  |  |  |  |  | Иванов И.И.; Сорокина С.Т. | Иванов И.И. | 8 | 1d | 1d | 2d | 120000 |
| 3 | 1.2 | Определение тематики и целевой аудитории |  | 4d | 2026-10-06 | 2026-10-09 | 2 |  |  |  |  | Сорокина С.Т.; Иванов И.И. [50%] | Сорокина С.Т. | 32 | 3d | 4d | 6d | 100000 |
| 4 | 1.3 | Разработка положения о конференции |  | 3d | 2026-10-12 | 2026-10-14 | 3 |  |  |  |  | Иванов И.И. | Иванов И.И. | 24 | 2d | 3d | 5d | 120000 |
| 5 | 1.4 | Положение утверждено | milestone | 0d | 2026-10-14 | 2026-10-14 | 4 |  |  |  |  |  |  |  |  |  |  |  |
| 6 | 2 | **Программный комитет** |  | 12d | 2026-10-15 | 2026-10-30 |  |  |  |  |  |  |  |  |  |  |  |  |
| 7 | 2.1 | Сбор аннотаций и тезисов |  | 5d | 2026-10-15 | 2026-10-21 | 5 |  |  |  |  | Орлова Е.Н. | Орлова Е.Н. | 40 | 4d | 5d | 8d | 70000 |
| 8 | 2.2 | Рецензирование материалов |  | 4d | 2026-10-22 | 2026-10-27 | 7 |  |  |  |  | Орлова Е.Н. | Орлова Е.Н. | 32 | 3d | 4d | 6d | 70000 |
| 9 | 2.3 | Формирование программы конференции |  | 3d | 2026-10-28 | 2026-10-30 | 8 |  |  |  |  | Сорокина С.Т.; Орлова Е.Н. [50%] | Сорокина С.Т. | 24 | 2d | 3d | 5d | 100000 |
| 10 | 2.4 | Программа утверждена | milestone | 0d | 2026-10-30 | 2026-10-30 | 9 |  |  |  |  |  |  |  |  |  |  |  |
| 11 | 3 | **Логистика** |  | 9d | 2026-10-15 | 2026-10-27 |  | 8d |  |  |  |  |  |  |  |  |  |  |
| 12 | 3.1 | Подбор зала и технического оборудования |  | 4d | 2026-10-15 | 2026-10-20 | 5 | 8d |  |  |  | Кузнецов Д.А. | Кузнецов Д.А. | 32 | 3d | 4d | 6d | 110000 |
| 13 | 3.2 | Организация кофе-брейков и обеда |  | 3d | 2026-10-16 | 2026-10-20 | 12SS+1d | 13d | 5d |  |  | Смирнова А.В.; Кузнецов Д.А. [50%] | Смирнова А.В. | 24 | 2d | 3d | 5d | 110000 |
| 14 | 3.3 | Транспорт и размещение спикеров |  | 5d | 2026-10-21 | 2026-10-27 | 12, 13FF | 8d |  |  |  | Смирнова А.В. [50%]; Волков М.С. [50%] | Смирнова А.В. | 20 | 4d | 5d | 8d | 110000 |
| 15 | 3.4 | Логистика подтверждена | milestone | 0d | 2026-10-27 | 2026-10-27 | 13, 14 | 8d |  |  |  |  |  |  |  |  |  |  |
| 16 | 4 | **Материалы и публичность** |  | 11d | 2026-10-28 | 2026-11-12 |  |  |  |  |  |  |  |  |  |  |  |  |
| 17 | 4.1 | Создание сайта конференции |  | 6d | 2026-11-02 | 2026-11-10 | 10 |  |  |  |  | Петров П.П. | Петров П.П. | 48 | 4d | 6d | 9d | 90000 |
| 18 | 4.2 | Рассылка первого сообщения |  | 2d | 2026-11-11 | 2026-11-12 | 17 |  |  |  |  | Смирнова А.В. | Смирнова А.В. | 16 | 1d | 2d | 3d | 110000 |
| 19 | 4.3 | Печать программ и бейджей |  | 3d | 2026-10-28 | 2026-10-30 | 15 | 8d |  |  |  | Печать программ [5 лист] |  |  | 2d | 3d | 5d |  |
| 20 | 4.4 | Подготовка сборника тезисов к печати |  | 4d | 2026-10-28 | 2026-11-02 | 8 | 7d |  |  |  | Орлова Е.Н.; Печать программ [3 лист] | Орлова Е.Н. | 32 | 3d | 4d | 7d | 70000 |
| 21 | 4.5 | Материалы готовы | milestone | 0d | 2026-11-12 | 2026-11-12 | 19, 20, 18 |  |  |  |  |  |  |  |  |  |  |  |
| 22 | 5 | **Проведение** |  | 5d | 2026-11-13 | 2026-11-19 |  |  |  |  |  |  |  |  |  |  |  |  |
| 23 | 5.1 | Регистрация участников |  | 1d | 2026-11-13 | 2026-11-13 | 21 |  |  | start no earlier than 2026-10-05 |  | Волков М.С. | Волков М.С. | 8 | 1d | 1d | 1d | 80000 |
| 24 | 5.2 | Открытие и пленарное заседание |  | 1d | 2026-11-16 | 2026-11-16 | 23 |  |  |  |  | Иванов И.И.; Сорокина С.Т. | Иванов И.И. | 8 | 1d | 1d | 2d | 120000 |
| 25 | 5.3 | Работа секций |  | 2d | 2026-11-17 | 2026-11-18 | 24 |  |  |  |  | Орлова Е.Н.; Кузнецов Д.А. [50%] | Орлова Е.Н. | 16 | 2d | 2d | 3d | 70000 |
| 26 | 5.4 | Заключительная сессия и подведение итогов |  | 1d | 2026-11-19 | 2026-11-19 | 25 |  |  |  |  | Иванов И.И. | Иванов И.И. | 8 | 1d | 1d | 2d | 120000 |
| 27 | 5.5 | Конференция завершена | milestone | 0d | 2026-11-19 | 2026-11-19 | 26 |  |  |  | 2026-11-23 |  |  |  |  |  |  |  |

Notes:
- 2: Повестка дня: / 1. Цели и тематика конференции. / 2. Состав оргкомитета и программного комитета. / 3. Ограничения: бюджет, сроки, вместимость зала. / 4. План-график подготовки программы.
- 18: Список рассылки: / - участники прошлых лет / - партнёрские вузы / - профильные кафедры
