# Организация научно-практической конференции (PERT 1-4-1)

Schedule from MS Project XML, 2026-10-05 to 2026-11-23, status date 2026-10-05.
Учебный проект

## Calendars

- Стандартный: Mon-Fri 08:00-12:00, 13:00-17:00; Sat-Sun off. Exceptions (off unless hours are given): 2026-11-04 (День народного единства).

## Resources

| Resource | Group | Unit | Rate | Cost per use |
| --- | --- | --- | --- | --- |
| Иванов И.И. | Управление |  | 1200 |  |
| Сорокина С.Т. | Оргкомитет |  | 1000 |  |
| Петров П.П. | Дизайн |  | 900 |  |
| Смирнова А.В. | Секретариат |  | 1100 |  |
| Кузнецов Д.А. | Техника |  | 1100 |  |
| Орлова Е.Н. | Методика |  | 700 |  |
| Волков М.С. | Приём |  | 800 | 500 |
| Печать программ | Материалы | лист | 5 |  |
| Аренда зала и техники | Инфраструктура |  |  |  |

## Schedule

| ID | WBS | Task | Type | Duration | Start | Finish | Predecessors | Total slack | Free slack | Constraint | Deadline | Resources | Ответственный | Часы основного ресурса | Оптимистическая длительность | Ожидаемая длительность | Пессимистическая длительность | Ставка основного ресурса |
| --- | --- | --- | --- | --- | --- | --- | --- | --- | --- | --- | --- | --- | --- | --- | --- | --- | --- | --- |
| 1 | 1 | **Инициация** |  | 8.38d | 2026-10-05 | 2026-10-15 |  |  |  |  |  |  |  |  |  |  |  |  |
| 2 | 1.1 | Первое заседание оргкомитета |  | 1.12d | 2026-10-05 | 2026-10-06 |  |  |  |  |  | Иванов И.И.; Сорокина С.Т. | Иванов И.И. | 9 | 1d | 1d | 2d | 120000 |
| 3 | 1.2 | Определение тематики и целевой аудитории |  | 4.12d | 2026-10-06 | 2026-10-12 | 2 |  |  |  |  | Сорокина С.Т.; Иванов И.И. [50%] | Сорокина С.Т. | 33 | 3d | 4d | 6d | 100000 |
| 4 | 1.3 | Разработка положения о конференции |  | 3.12d | 2026-10-12 | 2026-10-15 | 3 |  |  |  |  | Иванов И.И. | Иванов И.И. | 25 | 2d | 3d | 5d | 120000 |
| 5 | 1.4 | Положение утверждено | milestone | 0d | 2026-10-15 | 2026-10-15 | 4 |  |  |  |  |  |  |  |  |  |  |  |
| 6 | 2 | **Программный комитет** |  | 12.62d | 2026-10-15 | 2026-11-02 |  |  |  |  |  |  |  |  |  |  |  |  |
| 7 | 2.1 | Сбор аннотаций и тезисов |  | 5.38d | 2026-10-15 | 2026-10-22 | 5 |  |  |  |  | Орлова Е.Н. | Орлова Е.Н. | 43 | 4d | 5d | 8d | 70000 |
| 8 | 2.2 | Рецензирование материалов |  | 4.12d | 2026-10-22 | 2026-10-28 | 7 |  |  |  |  | Орлова Е.Н. | Орлова Е.Н. | 33 | 3d | 4d | 6d | 70000 |
| 9 | 2.3 | Формирование программы конференции |  | 3.12d | 2026-10-28 | 2026-11-02 | 8 |  |  |  |  | Сорокина С.Т.; Орлова Е.Н. [50%] | Сорокина С.Т. | 25 | 2d | 3d | 5d | 100000 |
| 10 | 2.4 | Программа утверждена | milestone | 0d | 2026-11-02 | 2026-11-02 | 9 |  |  |  |  |  |  |  |  |  |  |  |
| 11 | 3 | **Логистика** |  | 9.5d | 2026-10-15 | 2026-10-28 |  | 8.12d |  |  |  |  |  |  |  |  |  |  |
| 12 | 3.1 | Подбор зала и технического оборудования |  | 4.12d | 2026-10-15 | 2026-10-21 | 5 | 8.12d |  |  |  | Кузнецов Д.А. | Кузнецов Д.А. | 33 | 3d | 4d | 6d | 110000 |
| 13 | 3.2 | Организация кофе-брейков и обеда |  | 3.12d | 2026-10-16 | 2026-10-21 | 12SS+1d | 13.5d | 5.38d |  |  | Смирнова А.В.; Кузнецов Д.А. [50%] | Смирнова А.В. | 25 | 2d | 3d | 5d | 110000 |
| 14 | 3.3 | Транспорт и размещение спикеров |  | 5.38d | 2026-10-21 | 2026-10-28 | 12, 13FF | 8.12d |  |  |  | Смирнова А.В. [50%]; Волков М.С. [50%] | Смирнова А.В. | 21.5 | 4d | 5d | 8d | 110000 |
| 15 | 3.4 | Логистика подтверждена | milestone | 0d | 2026-10-28 | 2026-10-28 | 13, 14 | 8.12d |  |  |  |  |  |  |  |  |  |  |
| 16 | 4 | **Материалы и публичность** |  | 11.25d | 2026-10-28 | 2026-11-16 |  |  |  |  |  |  |  |  |  |  |  |  |
| 17 | 4.1 | Создание сайта конференции |  | 6.12d | 2026-11-03 | 2026-11-12 | 10 |  |  |  |  | Петров П.П. | Петров П.П. | 49 | 4d | 6d | 9d | 90000 |
| 18 | 4.2 | Рассылка первого сообщения |  | 2d | 2026-11-12 | 2026-11-16 | 17 |  |  |  |  | Смирнова А.В. | Смирнова А.В. | 16 | 1d | 2d | 3d | 110000 |
| 19 | 4.3 | Печать программ и бейджей |  | 3.12d | 2026-10-28 | 2026-11-02 | 15 | 8.12d |  |  |  | Печать программ [5 лист] |  |  | 2d | 3d | 5d |  |
| 20 | 4.4 | Подготовка сборника тезисов к печати |  | 4.38d | 2026-10-28 | 2026-11-05 | 8 | 6.88d |  |  |  | Орлова Е.Н.; Печать программ [3 лист] | Орлова Е.Н. | 35 | 3d | 4d | 7d | 70000 |
| 21 | 4.5 | Материалы готовы | milestone | 0d | 2026-11-16 | 2026-11-16 | 19, 20, 18 |  |  |  |  |  |  |  |  |  |  |  |
| 22 | 5 | **Проведение** |  | 5.38d | 2026-11-16 | 2026-11-23 |  |  |  |  |  |  |  |  |  |  |  |  |
| 23 | 5.1 | Регистрация участников |  | 1d | 2026-11-16 | 2026-11-17 | 21 |  |  | start no earlier than 2026-10-05 |  | Волков М.С. | Волков М.С. | 8 | 1d | 1d | 1d | 80000 |
| 24 | 5.2 | Открытие и пленарное заседание |  | 1.12d | 2026-11-17 | 2026-11-18 | 23 |  |  |  |  | Иванов И.И.; Сорокина С.Т. | Иванов И.И. | 9 | 1d | 1d | 2d | 120000 |
| 25 | 5.3 | Работа секций |  | 2.12d | 2026-11-18 | 2026-11-20 | 24 |  |  |  |  | Орлова Е.Н.; Кузнецов Д.А. [50%] | Орлова Е.Н. | 17 | 2d | 2d | 3d | 70000 |
| 26 | 5.4 | Заключительная сессия и подведение итогов |  | 1.12d | 2026-11-20 | 2026-11-23 | 25 |  |  |  |  | Иванов И.И. | Иванов И.И. | 9 | 1d | 1d | 2d | 120000 |
| 27 | 5.5 | Конференция завершена | milestone | 0d | 2026-11-23 | 2026-11-23 | 26 |  |  |  | 2026-11-23 |  |  |  |  |  |  |  |

Notes:
- 2: Повестка дня: / 1. Цели и тематика конференции. / 2. Состав оргкомитета и программного комитета. / 3. Ограничения: бюджет, сроки, вместимость зала. / 4. План-график подготовки программы.
- 18: Список рассылки: / - участники прошлых лет / - партнёрские вузы / - профильные кафедры
