# Внедрение DLP и SIEM в «Вектор-Финанс» (интеграция систем)

Schedule from MS Project, 2026-10-05 to 2027-06-24, status date 2026-10-05, costs in сом.
МФО «Вектор-Финанс»

## Calendars

- Стандартный: Mon-Fri 08:00-12:00, 13:00-17:00; Sat-Sun off. Exceptions (off unless hours are given): 2026-12-31 to 2027-01-08 (Новогодние каникулы), 2027-03-08 (Международный женский день), 2027-05-01 to 2027-05-03 (Праздник Весны и Труда), 2027-06-12 to 2027-06-14 (День России).

## Resources

| Resource | Group | Unit | Rate |
| --- | --- | --- | --- |
| Соколов А.И. | Управление |  | 2100 |
| Даирова Н.К. | ИБ |  | 1900 |
| Токтосунов И.М. | ИБ |  | 1450 |
| Гаврилов П.С. | ИТ |  | 1350 |
| ООО «Интегратор-Альфа» | Подрядчик |  | 3150 |
| Ермакова О.В. | Юристы |  | 1650 |
| Баймакова Р.Т. | HR |  | 1150 |
| Лицензии DLP | Лицензии | раб. место (год) | 2950 |
| Лицензии SIEM | Лицензии | источник (год) | 1850 |
| Закупка серверов и СХД (хранилище событий) | Инфраструктура |  |  |
| Аренда оборудования контура мониторинга | Инфраструктура |  |  |
| Внешняя оценка соответствия | Аудит |  |  |

## Schedule

| ID | WBS | Task | Type | Duration | Start | Finish | Predecessors | Total slack | Deadline | Resources | Work | Cost | Ответственный |
| --- | --- | --- | --- | --- | --- | --- | --- | --- | --- | --- | --- | --- | --- |
| 1 | 1 | **Инициация** |  | 16d | 2026-10-05 | 2026-10-26 |  | 0d |  |  | 256h | 464,200 |  |
| 2 | 1.1 | Разработка устава проекта: цель, границы, допущения |  | 6d | 2026-10-05 | 2026-10-12 |  | 0d |  | Соколов А.И.; Даирова Н.К. [50%] | 72h | 146,400 | Соколов А.И. |
| 3 | 1.2 | Устав утверждён спонсором | milestone | 0d | 2026-10-12 | 2026-10-12 | 2 | 173d |  |  |  |  |  |
| 4 | 1.3 | Границы, допущения и ограничения (бюджет, срок, регуляторика) |  | 4d | 2026-10-13 | 2026-10-16 | 2 | 0d |  | Соколов А.И.; Даирова Н.К. [50%] | 48h | 97,600 | Соколов А.И. |
| 5 | 1.4 | Обоснование сметы и валютная политика проекта |  | 5d | 2026-10-13 | 2026-10-19 | 2 | 5d |  | Соколов А.И. [50%]; Ермакова О.В. [50%] | 40h | 75,000 | Соколов А.И. |
| 6 | 1.5 | Реестр заинтересованных сторон и план коммуникаций |  | 6d | 2026-10-19 | 2026-10-26 | 4 | 0d |  | Соколов А.И. [50%]; Баймакова Р.Т.; Ермакова О.В. [50%] | 96h | 145,200 | Баймакова Р.Т. |
| 7 | 1.6 | Инициация завершена | milestone | 0d | 2026-10-26 | 2026-10-26 | 6, 5 | 0d |  |  |  |  |  |
| 8 | 2 | **Обследование** |  | 33d | 2026-10-27 | 2026-12-10 |  | 0d |  |  | 676h | 1,105,600 |  |
| 9 | 2.1 | Инвентаризация ~80 источников логов и систем (часть устарела) |  | 15d | 2026-10-27 | 2026-11-16 | 7 | 0d |  | Гаврилов П.С.; Токтосунов И.М. | 240h | 336,000 | Гаврилов П.С. |
| 10 | 2.2 | Классификация данных и карта каналов передачи ПДн (DLP) |  | 10d | 2026-10-27 | 2026-11-09 | 7 | 13d |  | Даирова Н.К.; Ермакова О.В. [50%] | 120h | 218,000 | Даирова Н.К. |
| 11 | 2.3 | Анализ угроз по MITRE ATT&CK (T1041, T1567, T1110) → правила |  | 8d | 2026-11-17 | 2026-11-26 | 9 | 0d |  | Даирова Н.К. [50%]; Токтосунов И.М. | 96h | 153,600 | Токтосунов И.М. |
| 12 | 2.4 | Проверка требований: 152-ФЗ, ГОСТ Р 57580.1, приказ ФСТЭК № 21 |  | 5d | 2026-10-27 | 2026-11-02 | 7 | 28d |  | Ермакова О.В.; Даирова Н.К. [50%] | 60h | 104,000 | Ермакова О.В. |
| 13 | 2.5 | ТЗ на интеграцию DLP→SIEM и выбор коробочных решений |  | 10d | 2026-11-27 | 2026-12-10 | 9, 10, 11 | 0d |  | Даирова Н.К.; Соколов А.И. [50%]; Токтосунов И.М. [50%] | 160h | 294,000 | Даирова Н.К. |
| 14 | 2.6 | Завершение обследования | milestone | 0d | 2026-12-10 | 2026-12-10 | 13, 12 | 0d |  |  |  |  |  |
| 15 | 3 | **Проектирование и пилот** |  | 63d | 2026-12-18 | 2027-03-26 |  | 0d |  |  | 976h | 2,281,200 |  |
| 16 | 3.1 | Архитектура: коллекторы, хранилище событий, интеграция DLP и SIEM |  | 12d | 2026-12-18 | 2027-01-13 | 14FS+5d | 0d |  | Даирова Н.К.; ООО «Интегратор-Альфа» [50%] | 144h | 333,600 | Даирова Н.К. |
| 17 | 3.2 | Политики DLP: классификация, каналы, режим мониторинга до блокировки |  | 15d | 2027-01-14 | 2027-02-03 | 16 | 0d |  | Даирова Н.К.; Ермакова О.В. [50%]; Токтосунов И.М. [50%] | 240h | 414,000 | Даирова Н.К. |
| 18 | 3.3 | Развёртывание контура пилота: SIEM, DLP-агенты на 30 рабочих местах |  | 8d | 2027-02-04 | 2027-02-15 | 17 | 0d |  | Гаврилов П.С.; ООО «Интегратор-Альфа»; Закупка серверов и СХД (хранилище событий); Аренда оборудования контура мониторинга | 128h | 728,000 | Гаврилов П.С. |
| 19 | 3.4 | Запуск пилота | milestone | 0d | 2027-02-15 | 2027-02-15 | 18 | 0d |  |  |  |  |  |
| 20 | 3.5 | Пилот: 15 источников логов, 20 правил корреляции, DLP в режиме мониторинга |  | 20d | 2027-02-16 | 2027-03-16 | 19 | 0d |  | Даирова Н.К.; Токтосунов И.М.; Гаврилов П.С. [50%] | 400h | 644,000 | Даирова Н.К. |
| 21 | 3.6 | Тюнинг правил, замер ложных срабатываний, устранение замечаний |  | 8d | 2027-03-17 | 2027-03-26 | 20 | 0d |  | Даирова Н.К. [50%]; ООО «Интегратор-Альфа» [50%] | 64h | 161,600 | Даирова Н.К. |
| 22 | 3.7 | Приёмка пилота | milestone | 0d | 2027-03-26 | 2027-03-26 | 21 | 0d |  |  |  |  |  |
| 23 | 4 | **Внедрение** |  | 40d | 2027-03-29 | 2027-05-24 |  | 0d |  |  | 952h | 3,635,800 |  |
| 24 | 4.1 | Подключение источников логов, этап 1: 40 критичных источников |  | 15d | 2027-04-05 | 2027-04-23 | 22FS+5d | 0d |  | Гаврилов П.С.; Токтосунов И.М.; Лицензии SIEM [40 источник (год)] | 240h | 410,000 | Гаврилов П.С. |
| 25 | 4.2 | Подключение источников логов, этап 2: остальные 40 и устаревшие системы |  | 20d | 2027-04-26 | 2027-05-24 | 24 | 0d |  | Гаврилов П.С.; ООО «Интегратор-Альфа» [50%]; Лицензии SIEM [40 источник (год)] | 240h | 542,000 | Гаврилов П.С. |
| 26 | 4.3 | DLP: раскатка агентов на 600 рабочих мест, возврат из мониторинга в блокировку |  | 15d | 2027-03-29 | 2027-04-16 | 22 | 25d |  | Гаврилов П.С.; ООО «Интегратор-Альфа» [50%]; Ермакова О.В. [30%]; Лицензии DLP [600 раб. место (год)] | 216h | 2,180,400 | Гаврилов П.С. |
| 27 | 4.4 | Правила корреляции, процесс реагирования, регламенты ИБ |  | 10d | 2027-04-26 | 2027-05-10 | 24 | 10d |  | Даирова Н.К.; Токтосунов И.М.; Ермакова О.В. [30%] | 184h | 307,600 | Даирова Н.К. |
| 28 | 4.5 | Обучение администраторов и дежурной смены ИБ |  | 6d | 2027-04-26 | 2027-05-04 | 24 | 14d |  | Баймакова Р.Т.; Даирова Н.К. [50%] | 72h | 195,800 | Баймакова Р.Т. |
| 29 | 4.6 | Ввод в эксплуатацию | milestone | 0d | 2027-05-24 | 2027-05-24 | 25, 26, 27, 28 | 0d | 2027-07-05 |  |  |  |  |

Notes:
- 2: Цель: снизить время обнаружения инцидентов и утечек ПДн, подключив / 95 % источников логов к SIEM и вернув DLP в режим контроля каналов.
- 5: Пять шагов: 1) классификация позиций (серверы в USD / лицензии и услуги в сомах); / 2) онлайн-курс НБКР и фиксация блока fx в project.yaml; 3) пересчёт USD в сомы; / 4) валютный резерв 4 % и риск роста курса в реестре рисков; / 5) согласование cash-flow со спонсором: этапы оплаты 40/30/30.
- 10: Классы: ПДн клиентов, коммерческая тайна, служебная информация. / Каналы: почта, мессенджеры, USB, веб-формы, выгрузки в БД.
- 20: Контур пилота: почта, 1С, кассовое ПО, домен-контроллер, веб-шлюз. / Замер ложных срабатываний и MTTD/MTTR до настройки правил.

| ID | WBS | Task | Type | Duration | Start | Finish | Predecessors | Total slack | Deadline | Resources | Work | Cost | Ответственный |
| --- | --- | --- | --- | --- | --- | --- | --- | --- | --- | --- | --- | --- | --- |
| 30 | 5 | **Эксплуатация и передача** |  | 22d | 2027-05-25 | 2027-06-24 |  | 0d |  |  | 264h | 474,800 |  |
| 31 | 5.1 | Регламент эксплуатации, SLA мониторинга и матрица ответственности |  | 6d | 2027-05-25 | 2027-06-01 | 29 | 0d |  | Даирова Н.К. [50%]; Соколов А.И. [50%] | 48h | 96,000 | Даирова Н.К. |
| 32 | 5.2 | Первичный аудит соответствия мерам защиты (ФСТЭК, ГОСТ Р 57580.1) |  | 10d | 2027-06-02 | 2027-06-16 | 31 | 0d |  | Ермакова О.В. [50%]; Даирова Н.К.; Внешняя оценка соответствия | 120h | 218,000 | Даирова Н.К. |
| 33 | 5.3 | Передача в эксплуатацию и регламентные испытания |  | 6d | 2027-06-17 | 2027-06-24 | 32 | 0d |  | Даирова Н.К. [50%]; Гаврилов П.С.; Соколов А.И. [50%] | 96h | 160,800 | Гаврилов П.С. |
| 34 | 5.4 | Проект закрыт | milestone | 0d | 2027-06-24 | 2027-06-24 | 33 | 0d | 2027-07-05 |  |  |  |  |
