# Внедрение системы привилегированного доступа (PAM) в «Вектор-Финанс»

Schedule from MS Project, 2026-10-05 to 2027-07-05, status date 2026-10-05, costs in сом.
МФО «Вектор-Финанс»

## Calendars

- Стандартный: Mon-Fri 08:00-12:00, 13:00-17:00; Sat-Sun off. Exceptions (off unless hours are given): 2026-12-31 to 2027-01-08 (Новогодние каникулы), 2027-03-08 (Международный женский день), 2027-05-01 to 2027-05-03 (Праздник Весны и Труда), 2027-06-12 to 2027-06-14 (День России).

## Resources

| Resource | Group | Unit | Rate |
| --- | --- | --- | --- |
| Соколов А.И. | Управление |  | 2100 |
| Даирова Н.К. | ИБ |  | 1900 |
| Токтосунов И.М. | ИБ |  | 1450 |
| Гаврилов П.С. | ИТ |  | 1350 |
| ООО «Интегратор-Альфа» | Подрядчик |  | 3150 |
| Ермакова О.В. | Юристы |  | 1650 |
| Баймакова Р.Т. | HR |  | 1150 |
| Лицензии PAM (нодная подписка) | Лицензии | нода | 13992 |
| Закупка серверов и СХД контура PAM | Инфраструктура |  |  |
| Аренда оборудования контура PAM | Инфраструктура |  |  |
| Внешняя оценка соответствия | Аудит |  |  |

## Schedule

| ID | WBS | Task | Type | Duration | Start | Finish | Predecessors | Total slack | Deadline | Resources | Work | Cost | Ответственный |
| --- | --- | --- | --- | --- | --- | --- | --- | --- | --- | --- | --- | --- | --- |
| 1 | 1 | **Инициация** |  | 16d | 2026-10-05 | 2026-10-26 |  | 0d |  |  | 256h | 464,200 |  |
| 2 | 1.1 | Разработка устава проекта: цель, границы, допущения |  | 6d | 2026-10-05 | 2026-10-12 |  | 0d |  | Соколов А.И.; Даирова Н.К. [50%] | 72h | 146,400 | Соколов А.И. |
| 3 | 1.2 | Устав утверждён спонсором | milestone | 0d | 2026-10-12 | 2026-10-12 | 2 | 180d |  |  |  |  |  |
| 4 | 1.3 | Границы, допущения и ограничения (бюджет, срок, регуляторика) |  | 4d | 2026-10-13 | 2026-10-16 | 2 | 0d |  | Соколов А.И.; Даирова Н.К. [50%] | 48h | 97,600 | Соколов А.И. |
| 5 | 1.4 | Обоснование сметы и валютная политика проекта |  | 5d | 2026-10-13 | 2026-10-19 | 2 | 5d |  | Соколов А.И. [50%]; Ермакова О.В. [50%] | 40h | 75,000 | Соколов А.И. |
| 6 | 1.5 | Реестр заинтересованных сторон и план коммуникаций |  | 6d | 2026-10-19 | 2026-10-26 | 4 | 0d |  | Соколов А.И. [50%]; Баймакова Р.Т.; Ермакова О.В. [50%] | 96h | 145,200 | Баймакова Р.Т. |
| 7 | 1.6 | Инициация завершена | milestone | 0d | 2026-10-26 | 2026-10-26 | 6, 5 | 0d |  |  |  |  |  |
| 8 | 2 | **Обследование** |  | 35d | 2026-10-27 | 2026-12-14 |  | 0d |  |  | 660h | 1,079,200 |  |
| 9 | 2.1 | Аудит ИТ-инфраструктуры: 120 серверов, домен, БД, филиалы |  | 15d | 2026-10-27 | 2026-11-16 | 7 | 0d |  | Гаврилов П.С.; Токтосунов И.М. | 240h | 336,000 | Гаврилов П.С. |
| 10 | 2.2 | Инвентаризация привилегированных учётных записей и прав |  | 10d | 2026-11-17 | 2026-11-30 | 9 | 0d |  | Даирова Н.К.; Токтосунов И.М. [50%] | 120h | 210,000 | Даирова Н.К. |
| 11 | 2.3 | Анализ угроз и сценариев по MITRE ATT&CK (T1078, T1021, T1110) |  | 8d | 2026-11-17 | 2026-11-26 | 9 | 2d |  | Даирова Н.К. [50%]; Токтосунов И.М. | 96h | 153,600 | Токтосунов И.М. |
| 12 | 2.4 | Проверка требований: 152-ФЗ, ГОСТ Р 57580.1, приказ ФСТЭК № 21 |  | 5d | 2026-10-27 | 2026-11-02 | 7 | 30d |  | Ермакова О.В.; Даирова Н.К. [50%] | 60h | 104,000 | Ермакова О.В. |
| 13 | 2.5 | Формирование ТЗ и выбор коробочного решения PAM |  | 10d | 2026-12-01 | 2026-12-14 | 10, 11 | 0d |  | Даирова Н.К.; Соколов А.И. [50%]; Ермакова О.В. [30%] | 144h | 275,600 | Даирова Н.К. |
| 14 | 2.6 | Завершение обследования | milestone | 0d | 2026-12-14 | 2026-12-14 | 13, 12 | 0d |  |  |  |  |  |
| 15 | 3 | **Проектирование и пилот** |  | 63d | 2026-12-22 | 2027-03-30 |  | 0d |  |  | 916h | 2,236,200 |  |
| 16 | 3.1 | Проектирование архитектуры PAM и размещения в контуре ВЦ |  | 12d | 2026-12-22 | 2027-01-15 | 14FS+5d | 0d |  | Даирова Н.К.; ООО «Интегратор-Альфа» [50%] | 144h | 333,600 | Даирова Н.К. |
| 17 | 3.2 | Политики доступа, ролевая модель, коннекторы к целям |  | 15d | 2027-01-18 | 2027-02-05 | 16 | 0d |  | Даирова Н.К.; Гаврилов П.С. [50%] | 180h | 309,000 | Даирова Н.К. |
| 18 | 3.3 | Установка и первичная настройка PAM в контуре пилота |  | 8d | 2027-02-08 | 2027-02-17 | 17 | 0d |  | Гаврилов П.С.; ООО «Интегратор-Альфа»; Закупка серверов и СХД контура PAM | 128h | 788,000 | Гаврилов П.С. |
| 19 | 3.4 | Запуск пилота | milestone | 0d | 2027-02-17 | 2027-02-17 | 18 | 0d |  |  |  |  |  |
| 20 | 3.5 | Пилот: 30 привилегированных учётных записей, сессионное управление |  | 20d | 2027-02-18 | 2027-03-18 | 19 | 0d |  | Даирова Н.К.; Токтосунов И.М.; Гаврилов П.С. [50%] | 400h | 644,000 | Даирова Н.К. |
| 21 | 3.6 | Тестирование и устранение замечаний пилота |  | 8d | 2027-03-19 | 2027-03-30 | 20 | 0d |  | Даирова Н.К. [50%]; ООО «Интегратор-Альфа» [50%] | 64h | 161,600 | Даирова Н.К. |
| 22 | 3.7 | Приёмка пилота | milestone | 0d | 2027-03-30 | 2027-03-30 | 21 | 0d |  |  |  |  |  |
| 23 | 4 | **Внедрение** |  | 45d | 2027-03-31 | 2027-06-02 |  | 0d |  |  | 752h | 3,812,520 |  |
| 24 | 4.1 | Развёртывание PAM: головной офис (серверы и администраторы) |  | 15d | 2027-04-14 | 2027-05-05 | 22FS+10d | 0d |  | Гаврилов П.С.; ООО «Интегратор-Альфа»; Лицензии PAM (нодная подписка) [120 нода] | 240h | 2,219,040 | Гаврилов П.С. |
| 25 | 4.2 | Развёртывание PAM в 3 филиалах и для внешних подрядчиков |  | 20d | 2027-05-06 | 2027-06-02 | 24 | 0d |  | Гаврилов П.С.; ООО «Интегратор-Альфа» [50%]; Даирова Н.К. [50%]; Лицензии PAM (нодная подписка) [40 нода]; Аренда оборудования контура PAM | 320h | 1,179,680 | Гаврилов П.С. |
| 26 | 4.3 | Регламенты: запрос доступа, аварийный доступ, реагирование |  | 10d | 2027-03-31 | 2027-04-13 | 22 | 35d |  | Даирова Н.К.; Ермакова О.В. [50%] | 120h | 218,000 | Даирова Н.К. |
| 27 | 4.4 | Обучение администраторов и владельцев доступа |  | 6d | 2027-05-06 | 2027-05-13 | 24 | 14d |  | Баймакова Р.Т.; Даирова Н.К. [50%] | 72h | 195,800 | Баймакова Р.Т. |
| 28 | 4.5 | Ввод в эксплуатацию | milestone | 0d | 2027-06-02 | 2027-06-02 | 25, 26, 27 | 0d | 2027-07-05 |  |  |  |  |

Notes:
- 2: Устав: измеримая цель (доля привилегированных сессий под контролем PAM), / границы (120 серверов, 15 админов, 3 филиала), бюджет 12 млн ₽ (12 525 600 сом), срок 9 мес.
- 5: Пять шагов: 1) классификация позиций (импорт в USD / локальные в сомах); / 2) онлайн-курс НБКР и фиксация блока fx в project.yaml; 3) пересчёт USD в сомы; / 4) валютный резерв 4 % и риск роста курса в реестре рисков; / 5) согласование cash-flow со спонсором: этапы оплаты 40/30/30.
- 10: 15 ИТ-администраторов и подрядчиков; выявленные «серые» учётные записи / квотируются и переводятся под контроль PAM.
- 20: Пилот на серверах головного офиса: ролевой доступ, брокеринг сессий, / запись сессий, аварийный доступ (break-glass) с двойным согласованием.

| ID | WBS | Task | Type | Duration | Start | Finish | Predecessors | Total slack | Deadline | Resources | Work | Cost | Ответственный |
| --- | --- | --- | --- | --- | --- | --- | --- | --- | --- | --- | --- | --- | --- |
| 29 | 5 | **Эксплуатация и передача** |  | 22d | 2027-06-03 | 2027-07-05 |  | 0d |  |  | 264h | 474,800 |  |
| 30 | 5.1 | Регламент эксплуатации, SLA и матрица ответственности |  | 6d | 2027-06-03 | 2027-06-10 | 28 | 0d |  | Даирова Н.К. [50%]; Соколов А.И. [50%] | 48h | 96,000 | Даирова Н.К. |
| 31 | 5.2 | Первичный аудит соответствия мерам защиты (ФСТЭК, ГОСТ Р 57580.1) |  | 10d | 2027-06-11 | 2027-06-25 | 30 | 0d |  | Ермакова О.В. [50%]; Даирова Н.К.; Внешняя оценка соответствия | 120h | 218,000 | Даирова Н.К. |
| 32 | 5.3 | Передача в эксплуатацию и регламентные испытания |  | 6d | 2027-06-28 | 2027-07-05 | 31 | 0d |  | Даирова Н.К. [50%]; Гаврилов П.С.; Соколов А.И. [50%] | 96h | 160,800 | Гаврилов П.С. |
| 33 | 5.4 | Проект закрыт | milestone | 0d | 2027-07-05 | 2027-07-05 | 32 | 0d | 2027-07-05 |  |  |  |  |
